# FoodiesProjectPlanV1.1

Schedule from MS Project, 2019-04-01 to 2019-05-25, 7 hours a day, costs in ج.م.‏, A marks actual dates.

## Calendars

- Standard: Mon-Fri 08:00-12:00, 13:00-17:00; Sat-Sun off.

## Resources

| Resource | Rate |
| --- | --- |
| Aya Hamdy (PM) | 100 |
| Hossam (Dev. Team) | 100 |
| Dina (Dev. Team) | 100 |
| Maryam M. (Dev. Team) | 100 |
| Mariam N. (Dev. Team) | 100 |
| Marwa (Dev. Team) | 100 |
| Labtops |  |
| Software Tools |  |

## Schedule

| ID | WBS | Task | Type | Duration | Start | Finish | Predecessors | Complete | Remaining | Actual start | Baseline start | Baseline finish | Baseline duration | Total slack | Resources | Work | Actual work | Cost | Baseline cost | Actual cost |
| --- | --- | --- | --- | --- | --- | --- | --- | --- | --- | --- | --- | --- | --- | --- | --- | --- | --- | --- | --- | --- |
| 1 | 1 | **Foodies** |  | 25.14d | 2019-04-27 | 2019-05-25 |  | 90% | 2.64d | 2019-04-01 | 2019-04-27 | 2019-05-18 | 18.29d |  | Aya Hamdy (PM); Dina (Dev. Team); Hossam (Dev. Team); Mariam N. (Dev. Team); Marwa (Dev. Team); Maryam M. (Dev. Team); Labtops; Software Tools | 1799.8h | 1403.5h | 179,980 | 173,325.11 | 140,350 |
| 2 | 1.1 | **Initiation** |  | 1d | 2019-04-27 A | 2019-04-27 A |  | 100% |  |  | 2019-04-27 | 2019-04-27 | 1d |  | Aya Hamdy (PM); Dina (Dev. Team); Hossam (Dev. Team); Marwa (Dev. Team); Maryam M. (Dev. Team) | 77h | 77h | 7,700 | 11,550 | 7,700 |
| 3 | 1.1.1 | Gather requirements | manual | 1d | 2019-04-27 A | 2019-04-27 A |  | 100% |  |  | 2019-04-27 | 2019-04-27 | 1d |  | Aya Hamdy (PM); Dina (Dev. Team); Hossam (Dev. Team); Mariam N. (Dev. Team); Marwa (Dev. Team); Maryam M. (Dev. Team) | 42h | 42h | 4,200 | 6,300 | 4,200 |
| 4 | 1.1.2 | SIQ | milestone | 0d | 2019-04-27 A | 2019-04-27 A | 3 | 100% |  |  | 2019-04-27 | 2019-04-27 |  |  | Hossam (Dev. Team); Marwa (Dev. Team) |  |  |  |  |  |
| 5 | 1.2 | **Initial planning** |  | 5.71d | 2019-04-28 A | 2019-05-02 | 3, 2 | 89% | 0.61d |  | 2019-04-28 | 2019-05-01 | 4.57d |  | Aya Hamdy (PM); Dina (Dev. Team); Hossam (Dev. Team); Marwa (Dev. Team); Maryam M. (Dev. Team) | 263h | 252.5h | 26,300 | 27,150 | 25,250 |
| 6 | 1.2.1 | **Project Plan** |  | 0d | 2019-04-01 | 2019-04-01 |  | 63% | 0d | 2019-04-28 | 2019-04-28 | 2019-04-29 | 1d |  | Maryam M. (Dev. Team) | 21h | 10.5h | 2,100 | 1,050 | 1,050 |
| 7 | 1.2.1.1 | Project Description | milestone, manual | 0d | 2019-04-28 A | 2019-04-28 A |  | 100% |  |  | 2019-04-28 | 2019-04-28 |  |  | Aya Hamdy (PM) |  |  |  |  |  |
| 8 | 1.2.1.2 | Objective | milestone | 0d | 2019-04-28 A | 2019-04-28 A | 7 | 100% |  |  | 2019-04-28 | 2019-04-28 |  |  | Aya Hamdy (PM); Maryam M. (Dev. Team) |  |  |  |  |  |
| 9 | 1.2.1.3 | Scope |  | 1d | 2019-04-28 A | 2019-04-29 | 8 | 25% | 0.75d |  | 2019-04-28 | 2019-04-29 | 1d | 21.86d | Dina (Dev. Team); Maryam M. (Dev. Team) | 14h | 3.5h | 1,400 |  | 350 |
| 10 | 1.2.1.4 | Development approach | milestone | 0d | 2019-04-28 A | 2019-04-29 A | 9 | 100% |  |  | 2019-04-28 | 2019-04-28 |  |  | Aya Hamdy (PM); Dina (Dev. Team); Hossam (Dev. Team); Labtops; Mariam N. (Dev. Team); Marwa (Dev. Team); Maryam M. (Dev. Team) |  |  |  |  |  |
| 11 | 1.2.1.5 | Software Tools |  | 1d | 2019-04-28 A | 2019-04-30 A | 10 | 100% |  |  | 2019-04-28 | 2019-04-29 | 1d |  | Maryam M. (Dev. Team) | 7h | 7h | 700 |  | 700 |
| 12 | 1.2.2 | Project schedule | manual | 1d | 2019-04-29 A | 2019-04-30 A | 6 | 100% |  |  | 2019-04-29 | 2019-04-30 | 1d |  | Aya Hamdy (PM); Labtops; Software Tools | 7h | 7h | 700 | 1,050 | 700 |
| 13 | 1.2.3 | Project risk | manual | 1d | 2019-04-30 A | 2019-04-30 A | 6 | 100% |  |  | 2019-04-29 | 2019-04-30 | 1d |  | Marwa (Dev. Team); Labtops | 7h | 7h | 700 | 1,050 | 700 |
| 14 | 1.2.4 | Test plan | manual | 2d | 2019-04-29 A | 2019-05-01 A | 9 | 100% |  |  |  |  |  |  | Labtops; Marwa (Dev. Team) | 14h | 14h | 1,400 |  | 1,400 |
| 15 | 1.2.5 | CCB | milestone, manual | 0d | 2019-04-30 A | 2019-04-30 A | 12 | 100% |  |  |  |  |  |  | Mariam N. (Dev. Team) |  |  |  |  |  |
| 16 | 1.2.6 | cm plan | manual | 1d | 2019-04-30 A | 2019-05-01 A | 12 | 100% |  |  |  |  |  |  | Hossam (Dev. Team); Labtops; Maryam M. (Dev. Team) | 14h | 14h | 1,400 |  | 1,400 |
| 17 | 1.2.7 | Skill Matrix | milestone, manual | 0d | 2019-05-01 A | 2019-05-01 A | 16 | 100% |  |  |  |  |  |  | Aya Hamdy (PM); Labtops |  |  |  |  |  |
| 18 | 1.2.8 | Project Issues | milestone, manual | 0d | 2019-05-01 A | 2019-05-01 A | 17 | 100% |  |  |  |  |  |  | Aya Hamdy (PM); Labtops; Mariam N. (Dev. Team) |  |  |  |  |  |
| 19 | 1.3 | **Analysis** |  | 4.57d | 2019-05-02 A | 2019-05-07 A | 5 | 100% |  |  | 2019-05-01 | 2019-05-06 | 4d |  | Aya Hamdy (PM); Dina (Dev. Team); Hossam (Dev. Team); Mariam N. (Dev. Team); Marwa (Dev. Team); Maryam M. (Dev. Team) | 219.5h | 219.5h | 21,950 | 25,725 | 21,950 |
| 20 | 1.3.1 | Requirements Analysis | manual | 0.5d | 2019-05-02 A | 2019-05-02 A | 5 | 100% |  |  | 2019-05-01 | 2019-05-02 | 0.5d |  | Dina (Dev. Team) | 3.5h | 3.5h | 350 | 525 | 350 |
| 21 | 1.4 | **Design** |  | 2d | 2019-05-07 A | 2019-05-08 A | 19 | 100% |  |  | 2019-05-07 | 2019-05-08 | 2d |  |  | 21h | 21h | 2,100 |  | 2,100 |
| 22 | 1.4.1 | High level design | milestone, manual | 0d | 2019-05-07 A | 2019-05-07 A | 5 | 100% |  |  |  |  |  |  | Aya Hamdy (PM); Labtops; Software Tools |  |  |  |  |  |
| 23 | 1.4.2 | UseCase And Usecase discription | manual | 1d | 2019-05-07 A | 2019-05-07 A | 5 | 100% |  |  |  |  |  |  | Labtops; Marwa (Dev. Team); Software Tools | 7h | 7h | 700 |  | 700 |
| 24 | 1.4.3 | ERD | manual | 1d | 2019-05-08 A | 2019-05-08 A | 5 | 100% |  |  |  |  |  |  | Hossam (Dev. Team); Labtops; Software Tools | 7h | 7h | 700 |  | 700 |
| 25 | 1.4.4 | Class diagram | milestone, manual | 0d | 2019-05-07 A | 2019-05-07 A | 5 | 100% |  |  |  |  |  |  | Labtops; Mariam N. (Dev. Team); Software Tools |  |  |  |  |  |
| 26 | 1.4.5 | DFD | milestone, manual | 0d | 2019-05-07 A | 2019-05-07 A | 5 | 100% |  |  |  |  |  |  | Labtops; Maryam M. (Dev. Team); Software Tools; Dina (Dev. Team) |  |  |  |  |  |
| 27 | 1.4.6 | Wireframes | manual | 1d | 2019-05-07 A | 2019-05-07 A | 5 | 100% |  |  |  |  |  |  | Labtops; Maryam M. (Dev. Team); Software Tools | 7h | 7h | 700 |  | 700 |

| ID | WBS | Task | Type | Duration | Start | Finish | Predecessors | Complete | Remaining | Actual start | Baseline start | Baseline finish | Baseline duration | Total slack | Resources | Work | Actual work | Cost | Actual cost |
| --- | --- | --- | --- | --- | --- | --- | --- | --- | --- | --- | --- | --- | --- | --- | --- | --- | --- | --- | --- |
| 28 | 1.5 | **Implementation** |  | 8d | 2019-05-08 | 2019-05-17 A | 21 | 100% |  | 2019-05-14 | 2019-05-08 | 2019-05-17 | 8d |  |  | 55.3h | 55.3h | 5,530 | 5,530 |
| 29 | 1.5.1 | Frontend offers and home page | manual | 1d | 2019-05-14 A | 2019-05-14 A | 27 | 100% |  |  |  |  |  |  | Labtops; Maryam M. (Dev. Team); Software Tools | 7h | 7h | 700 | 700 |
| 30 | 1.5.2 | Front end login and register page | manual | 1d | 2019-05-14 A | 2019-05-14 A | 27 | 100% |  |  |  |  |  |  | Labtops; Marwa (Dev. Team); Software Tools | 7h | 7h | 700 | 700 |
| 31 | 1.5.3 | Front end Add Menu page | manual | 1d | 2019-05-15 A | 2019-05-15 A | 27 | 100% |  |  |  |  |  |  | Aya Hamdy (PM); Labtops [90%]; Software Tools [90%] | 6.3h | 6.3h | 630 | 630 |
| 32 | 1.5.4 | View menu and delete user pages | manual | 1d | 2019-05-14 A | 2019-05-14 A | 27 | 100% |  |  |  |  |  |  | Hossam (Dev. Team); Labtops; Software Tools | 7h | 7h | 700 | 700 |
| 33 | 1.5.5 | Admin and users profiles | manual | 1d | 2019-05-14 A | 2019-05-14 A | 27 | 100% |  |  |  |  |  |  | Dina (Dev. Team); Labtops; Software Tools | 7h | 7h | 700 | 700 |
| 34 | 1.5.6 | Backend of all pages | manual | 3d | 2019-05-15 A | 2019-05-17 A | 29, 30, 31, 32, 33 | 100% |  |  |  |  |  |  | Labtops; Mariam N. (Dev. Team); Software Tools | 21h | 21h | 2,100 | 2,100 |
| 35 | 1.6 | Testing | manual | 23.14d | 2019-04-17 A | 2019-05-24 | 28SS, 2SS, 5SS, 19SS, 21SS | 85% | 3.47d |  | 2019-04-27 | 2019-05-17 | 8d |  | Aya Hamdy (PM); Dina (Dev. Team); Hossam (Dev. Team); Labtops; Mariam N. (Dev. Team); Marwa (Dev. Team); Maryam M. (Dev. Team); Software Tools | 924h | 778.2h | 92,400 | 77,820 |
| 36 | 1.7 | Deployment | manual | 0.29d | 2019-05-25 | 2019-05-25 | 35 |  |  |  | 2019-05-17 | 2019-05-17 | 0.29d |  |  |  |  |  |  |
| 37 | 1.8 | closing | milestone | 0d | 2019-05-25 | 2019-05-25 | 36 |  |  |  | 2019-05-18 | 2019-05-18 |  | 0d |  |  |  |  |  |
