# FoodiesProjectPlanV1.1

Schedule from MS Project, 2019-04-27 to 2019-05-17, 7 hours a day, costs in ج.م.‏, A marks actual dates.

## Calendars

- Standard: Mon-Fri 08:00-12:00, 13:00-17:00; Sat-Sun off.

## Resources

| Resource | Rate |
| --- | --- |
| Aya Hamdy (PM) | 100 |
| Hossam (Dev. Team) | 100 |
| Dina (Dev. Team) | 100 |
| Maryam M. (Dev. Team) | 100 |
| Mariam N. (Dev. Team) | 100 |
| Marwa (Dev. Team) | 100 |
| Labtops |  |
| Software Tools |  |

## Schedule

| ID | WBS | Task | Type | Duration | Start | Finish | Predecessors | Complete | Remaining | Baseline start | Baseline finish | Baseline duration | Total slack | Resources | Work | Actual work | Cost | Baseline cost | Actual cost |
| --- | --- | --- | --- | --- | --- | --- | --- | --- | --- | --- | --- | --- | --- | --- | --- | --- | --- | --- | --- |
| 1 | 1 | **Foodies** |  | 17.14d | 2019-04-27 A | 2019-05-17 |  | 11% | 15.23d | 2019-04-27 | 2019-05-18 | 18.29d | 0d | Aya Hamdy (PM); Dina (Dev. Team); Hossam (Dev. Team); Mariam N. (Dev. Team); Marwa (Dev. Team); Maryam M. (Dev. Team); Labtops; Software Tools | 1155.5h | 356.55h | 115,550.08 | 173,325.11 | 35,655 |
| 2 | 1.1 | **Initiation** |  | 1d | 2019-04-27 A | 2019-04-27 A |  | 100% |  | 2019-04-27 | 2019-04-27 | 1d |  | Aya Hamdy (PM); Dina (Dev. Team); Hossam (Dev. Team); Marwa (Dev. Team); Maryam M. (Dev. Team) | 77h | 77h | 7,700 | 11,550 | 7,700 |
| 3 | 1.1.1 | Gather requirements | manual | 1d | 2019-04-27 A | 2019-04-27 A |  | 100% |  | 2019-04-27 | 2019-04-27 | 1d |  | Aya Hamdy (PM); Dina (Dev. Team); Hossam (Dev. Team); Mariam N. (Dev. Team); Marwa (Dev. Team); Maryam M. (Dev. Team) | 42h | 42h | 4,200 | 6,300 | 4,200 |
| 4 | 1.1.2 | SIQ | milestone | 0d | 2019-04-27 A | 2019-04-27 A | 3 | 100% |  | 2019-04-27 | 2019-04-27 |  |  | Hossam (Dev. Team); Marwa (Dev. Team) |  |  |  |  |  |
| 5 | 1.2 | **Initial planning** |  | 4.57d | 2019-04-28 A | 2019-05-01 | 3, 2 | 29% | 3.26d | 2019-04-28 | 2019-05-01 | 4.57d |  | Aya Hamdy (PM); Dina (Dev. Team); Hossam (Dev. Team); Marwa (Dev. Team); Maryam M. (Dev. Team) | 181h | 43.75h | 18,100 | 27,150 | 4,375 |
| 6 | 1.2.1 | **Project Plan** |  | 1d | 2019-04-28 A | 2019-04-29 |  | 33% | 0.68d | 2019-04-28 | 2019-04-29 | 1d | 0d | Maryam M. (Dev. Team) | 7h |  | 700 | 1,050 |  |
| 7 | 1.2.1.1 | Project Description | milestone, manual | 0d | 2019-04-28 A | 2019-04-28 A |  | 100% |  | 2019-04-28 | 2019-04-28 |  |  |  |  |  |  |  |  |
| 8 | 1.2.1.2 | Objective | milestone | 0d | 2019-04-28 A | 2019-04-28 A | 7 | 100% |  | 2019-04-28 | 2019-04-28 |  |  |  |  |  |  |  |  |
| 9 | 1.2.1.3 | Scope |  | 1d | 2019-04-28 A | 2019-04-29 | 8 | 25% | 0.75d | 2019-04-28 | 2019-04-29 | 1d | 0d |  |  |  |  |  |  |
| 10 | 1.2.1.4 | Development approach | milestone | 0d | 2019-04-28 A | 2019-04-28 A | 9 | 100% |  | 2019-04-28 | 2019-04-28 |  |  |  |  |  |  |  |  |
| 11 | 1.2.1.5 | Software Tools |  | 1d | 2019-04-28 A | 2019-04-29 | 10 | 40% | 0.6d | 2019-04-28 | 2019-04-29 | 1d | 0d |  |  |  |  |  |  |
| 12 | 1.2.2 | Project schedule | manual | 1d | 2019-04-29 A | 2019-04-30 | 6 | 50% | 0.5d | 2019-04-29 | 2019-04-30 | 1d |  | Aya Hamdy (PM) | 7h | 3.5h | 700 | 1,050 | 350 |
| 13 | 1.2.3 | Project risk | manual | 1d | 2019-04-29 | 2019-04-30 | 6 |  |  | 2019-04-29 | 2019-04-30 | 1d |  | Marwa (Dev. Team) | 7h |  | 700 | 1,050 |  |
| 14 | 1.3 | **Analysis** |  | 4d | 2019-05-01 A | 2019-05-06 A | 5 | 100% |  | 2019-05-01 | 2019-05-06 | 4d |  | Aya Hamdy (PM); Dina (Dev. Team); Hossam (Dev. Team); Mariam N. (Dev. Team); Marwa (Dev. Team); Maryam M. (Dev. Team) | 171.5h | 171.5h | 17,150 | 25,725 | 17,150 |
| 15 | 1.3.1 | Requirements Analysis | manual | 0.5d | 2019-05-01 A | 2019-05-02 A | 5 | 100% |  | 2019-05-01 | 2019-05-02 | 0.5d |  | Dina (Dev. Team) | 3.5h | 3.5h | 350 | 525 | 350 |
| 16 | 1.4 | Design | manual | 2d | 2019-05-07 | 2019-05-08 | 14 |  |  | 2019-05-07 | 2019-05-08 | 2d |  |  |  |  |  |  |  |
| 17 | 1.5 | Implementation | manual | 8d | 2019-05-08 | 2019-05-17 | 16 |  |  | 2019-05-08 | 2019-05-17 | 8d |  |  |  |  |  |  |  |
| 18 | 1.6 | Testing | manual | 8d | 2019-04-27 A | 2019-05-17 | 17SS, 2SS, 5SS, 14SS, 16SS |  | 8d | 2019-04-27 | 2019-05-17 | 8d |  |  |  |  |  |  |  |
| 19 | 1.7 | Deployment | manual | 0.29d | 2019-05-17 | 2019-05-17 | 18 |  |  | 2019-05-17 | 2019-05-17 | 0.29d |  |  |  |  |  |  |  |
| 20 | 1.8 | closing | milestone | 0d | 2019-05-17 | 2019-05-17 | 19 |  |  | 2019-05-18 | 2019-05-18 |  | 0d |  |  |  |  |  |  |
